How a schedule from MS Project changed from version to version. A marks actual dates.

## Version 1 (data date 2026-04-05, saved 2026-04-05)

| ID | WBS | Task | Duration | Start | Finish | Predecessors | Complete | Total float | Constraint |
| --- | --- | --- | --- | --- | --- | --- | --- | --- | --- |
| 1 | 1 | **Диплом** | 96d | 2026-02-09 A | 2026-06-22 |  | 32% | 0d |  |
| 2 |  | Анализ требований (ТЗ) | 5d | 2026-02-09 A | 2026-02-13 A |  | 100% |  | start no earlier than 2026-02-09 |
| 3 | 1.2 | **Подготовительные работы** | 9d | 2026-02-16 A | 2026-02-26 A |  | 100% |  |  |
| 4 |  | Сравнительный анализ отечественных и зарубежных аналогов проектируемой системы | 9d | 2026-02-16 A | 2026-02-26 A | 2 | 100% |  | start no earlier than 2026-02-16 |
| 5 |  | Выбор технологии, среды и языка программирования | 9d | 2026-02-16 A | 2026-02-26 A | 2 | 100% |  | start no earlier than 2026-02-16 |
| 6 |  | Анализ процесса обработки информации, выбор структур данных для её хранения, выбор методов и алгоритмов решения задачи | 9d | 2026-02-16 A | 2026-02-26 A | 2 | 100% |  | start no earlier than 2026-02-16 |
| 7 | 1.3 | **Разработка спецификаций проектируемой системы** | 26d | 2026-02-27 A | 2026-04-03 A |  | 100% |  |  |
| 8 |  | Построение диаграмм вариантов использования | 5d | 2026-02-27 A | 2026-03-05 A | 6 | 100% |  | start no earlier than 2026-02-27 |
| 9 |  | Построение контекстных диаграмм классов | 5d | 2026-02-27 A | 2026-03-05 A | 6 | 100% |  | start no earlier than 2026-02-27 |
| 10 |  | Построение диаграмм последовательностей системы | 5d | 2026-03-09 A | 2026-03-13 A | 6 | 100% |  | start no earlier than 2026-03-09 |
| 11 |  | Построение диаграммы деятельностей варианта использования | 5d | 2026-03-09 A | 2026-03-13 A | 6 | 100% |  | start no earlier than 2026-03-09 |
| 12 |  | Построение диаграммы переходов состояний | 10d | 2026-03-23 A | 2026-04-03 A | 6 | 100% |  | start no earlier than 2026-03-23 |
| 13 |  | Построение диаграммы отношений компонентов данных | 10d | 2026-03-23 A | 2026-04-03 A | 6 | 100% |  | start no earlier than 2026-03-23 |
| 14 | 1.4 | **Проектирование программного обеспечения** | 50d | 2026-04-06 | 2026-06-12 |  |  | 0d |  |
| 15 |  | Проектирование структуры системы и построение диаграммы пакетов | 10d | 2026-04-06 | 2026-04-17 | 13 |  | 0d | start no earlier than 2026-04-06 |
| 16 |  | Проектирование функциональных пакетов | 20d | 2026-04-20 | 2026-05-15 | 15 |  | 0d | start no earlier than 2026-04-17 |
| 17 |  | Построение диаграммы компонентов | 20d | 2026-05-18 | 2026-06-12 | 16 |  | 6d | start no earlier than 2026-04-13 |
| 18 |  | Построение диаграммы размещения | 5d | 2026-05-05 | 2026-05-11 | 15 |  | 30d | start no earlier than 2026-05-05 |
| 19 |  | Проектирование базы данных | 15d | 2026-04-06 | 2026-04-24 | 6, 2 |  | 41d | start no earlier than 2026-04-06 |
| 20 | 1.5 | **Разработка программного обеспечения** | 31d | 2026-05-11 | 2026-06-22 |  |  |  |  |
| 21 |  | Разработка пакетов ... | 26d | 2026-05-18 | 2026-06-22 | 15, 16 |  | 0d | start no earlier than 2026-05-11 |
| 22 |  | Проектирование интерфейса пользователя | 16d | 2026-06-01 | 2026-06-22 | 6, 8 |  | 0d | start no earlier than 2026-06-01 |
| 23 |  | Выбор стратегии тестирования, разработки тестов, программа и методика испытаний | 31d | 2026-05-11 | 2026-06-22 | 2 |  | 0d | start no earlier than 2026-05-11 |
| 24 |  | Технико-экономическое обоснование | 11d | 2026-06-08 | 2026-06-22 | 2, 4, 6 |  | 0d | start no earlier than 2026-06-08 |

## Version 2 (data date 2026-04-05, saved 2026-04-20)

Last finish stays 2026-06-22.

Changed:

| ID | Task | Other |
| --- | --- | --- |
| 21 | Разработка пакетов "Интерфейс пользователя", "Обработка эмбеддингов", "Обработка промежуточных результатов" | was named Разработка пакетов ...; resources Тестолог; VS Code; LLM-агенты; Rust; C#; Visual Studio; GitFlic; Разработчик → VS Code; LLM-агенты; Rust; C#; Visual Studio; GitFlic; Разработчик |
| 22 | Проектирование интерфейса пользователя | resources Excalidraw; Тестолог; VS Code; LLM-агенты; Разработчик → Excalidraw; VS Code; LLM-агенты; Разработчик |
| 23 | Выбор стратегии тестирования, разработки тестов, программа и методика испытаний | resources Тестолог; VS Code; LLM-агенты; C#; Rust; Visual Studio → VS Code; LLM-агенты; C#; Rust; Visual Studio |

## Version 3 (data date 2026-05-19, saved 2026-05-18)

Last finish stays 2026-06-22. Complete tasks 10 → 12.

Removed: 18 Построение диаграммы размещения; 19 Проектирование базы данных

Changed:

| ID | Task | Start | Finish | Duration | Complete | Total float | Other |
| --- | --- | --- | --- | --- | --- | --- | --- |
| 1 | **Диплом** |  |  | 96d → 95.88d | 32% → 50% |  |  |
| 2 | Анализ требований (ТЗ) |  |  |  |  |  | resources Заказчик; Разработчик → Заказчик; Разработчик; Науч. рук. |
| 9 | Построение контекстной диаграммы классов |  |  |  |  |  | was named Построение контекстных диаграмм классов |
| 10 | Построение диаграмм последовательностей системы | 2026-03-09 A → 2026-03-08 A (-1d) |  |  |  |  |  |
| 11 | Построение диаграммы деятельностей варианта использования | 2026-03-09 A → 2026-03-08 A (-1d) |  |  |  |  |  |
| 12 | Построение диаграммы переходов состояний | 2026-03-23 A → 2026-03-15 A (-8d) | 2026-04-03 A → 2026-03-27 A (-7d) |  |  |  |  |
| 13 | Построение диаграммы отношений компонентов данных | 2026-03-23 A → 2026-03-22 A (-1d) |  |  |  |  |  |
| 14 | **Проектирование программного обеспечения** | 2026-04-06 A | 2026-06-12 → 2026-05-18 (-25d) | 50d → 30d | 0% → 64% | 0d → 25.88d |  |
| 15 | Проектирование структуры системы и построение диаграммы пакетов | 2026-04-06 A | 2026-04-17 A |  | 0% → 100% | 0d → none | resources Разработчик; LLM-агенты; Excalidraw → Разработчик; LLM-агенты; Excalidraw; SQLite |
| 16 | Проектирование функциональных пакетов | 2026-04-20 A | 2026-05-15 A |  | 0% → 100% | 0d → none |  |
| 17 | Построение диаграммы компонентов | 2026-05-18 → 2026-04-20 A (-28d) | 2026-06-12 → 2026-05-18 (-25d) |  | 0% → 9% | 6d → 25.88d | constraint start no earlier than 2026-04-13 → finish no earlier than 2026-05-15; resources Разработчик; LLM-агенты; Excalidraw → Разработчик [25%]; LLM-агенты [109.4%]; Excalidraw [109.4%] |
| 18 | **Разработка программного обеспечения** | 2026-05-11 → 2026-05-15 A (+4d) |  | 31d → 26.88d | 0% → 11% | none → 0d |  |
| 19 | Разработка пакета "Обработка эмбеддингов" | 2026-05-18 → 2026-05-15 A (-3d) |  | 26d → 26.88d | 0% → 7% |  | was named Разработка пакетов "Интерфейс пользователя", "Обработка эмбеддингов", "Обработка промежуточных результатов"; constraint start no earlier than 2026-05-11 → finish no earlier than 2026-06-22; resources VS Code; LLM-агенты; Rust; C#; Visual Studio; GitFlic; Разработчик → VS Code [107.2%]; LLM-агенты [107.2%]; Rust [107.2%]; GitFlic [107.2%]; Разработчик [25%] |
| 20 | Разработка пакета "Интерфейс пользователя" | 2026-06-01 → 2026-05-18 (-14d) |  | 16d → 25.88d |  |  | was named Проектирование интерфейса пользователя; constraint start no earlier than 2026-06-01 → finish no earlier than 2026-06-22; resources Excalidraw; VS Code; LLM-агенты; Разработчик → Excalidraw; VS Code; LLM-агенты; Разработчик [25%] |
| 21 | Выбор стратегии тестирования, разработки тестов, программа и методика испытаний | 2026-05-11 → 2026-05-18 A (+7d) |  | 31d → 25.88d | 0% → 27% |  | constraint start no earlier than 2026-05-11 → finish no earlier than 2026-06-22; resources VS Code; LLM-агенты; C#; Rust; Visual Studio → VS Code; LLM-агенты; Rust; Разработчик [25%]; GitFlic |
| 22 | Технико-экономическое обоснование | 2026-06-08 → 2026-05-18 (-21d) |  | 11d → 25.88d |  |  | constraint start no earlier than 2026-06-08 → finish no earlier than 2026-06-22; resources Науч. рук.; Заказчик; Разработчик → Науч. рук. [50%]; Заказчик [50%]; Разработчик [50%] |

## Version 4 (data date 2026-05-19, saved 2026-05-21)

Last finish stays 2026-06-22.

Changed:

| ID | Task | Finish | Duration | Total float |
| --- | --- | --- | --- | --- |
| 14 | **Проектирование программного обеспечения** | 2026-05-18 → 2026-06-11 (+24d) | 30d → 48.12d | 25.88d → 7.75d |
| 17 | Построение диаграммы компонентов | 2026-05-18 → 2026-06-11 (+24d) |  | 25.88d → 7.75d |
